# SIF_ASP al 2309

Schedule from MS Project, 2002-09-24 to 2002-11-11, A marks actual dates.
SOIN

## Calendars

- Standard: Mon-Fri 08:00-12:00, 13:00-17:00; Sat-Sun off.

## Resources

| Resource |
| --- |
| Gustavo Mata |
| Marcel de M. |
| Rodolfo Jiménez |
| Yamileth |
| Rodolfo Jiménezr |

## Schedule

| ID | WBS | Task | Type | Duration | Start | Finish | Predecessors | Complete | Remaining | Total slack | Free slack | Resources | Work | Actual work |
| --- | --- | --- | --- | --- | --- | --- | --- | --- | --- | --- | --- | --- | --- | --- |
| 1 | 1 | **SOIN SIF WEB ASP** |  | 34.25d | 2002-09-24 A | 2002-11-11 |  | 36% | 21.96d | 0d |  |  | 512h | 183.7h |
| 2 | 1.1 | **Movimientos Bancarios** |  | 3.5d | 2002-09-25 A | 2002-09-30 |  | 61% | 1.38d | 1d |  |  | 28h | 17h |
| 3 | 1.1.1 | Pantalla de conciliación bancaria |  | 20h | 2002-09-25 A | 2002-09-27 | 6 | 85% | 3h | 1d | 0d | Gustavo Mata | 20h | 17h |
| 4 | 1.1.2 | Carga de Estado de Cuenta por WebService |  | 8h | 2002-09-27 | 2002-09-30 | 3 |  |  | 1d | 0d | Gustavo Mata | 8h |  |
| 5 | 1.2 | **Inventarios** |  | 1.25d | 2002-09-24 A | 2002-09-25 A |  | 100% |  |  |  |  | 10h | 10h |
| 6 | 1.2.1 | Ajustes en movimientos interalmacén |  | 10h | 2002-09-24 A | 2002-09-25 A |  | 100% |  |  |  | Gustavo Mata | 10h | 10h |
| 7 | 1.3 | **Cuentas por cobrar** |  | 2d | 2002-09-30 A | 2002-10-02 |  | 50% | 1d | 0d |  |  | 16h | 8h |
| 8 | 1.3.1 | Integración con bancos |  | 8h | 2002-09-30 | 2002-10-01 | 4 |  |  | 1d |  | Gustavo Mata | 8h |  |
| 9 | 1.3.2 | Mantenimiento de listas de contactos de socios de negocios |  | 8h | 2002-10-01 A | 2002-10-02 A | 8 | 100% |  |  |  | Gustavo Mata | 8h | 8h |
| 10 | 1.4 | **Activos fijos** |  | 16d | 2002-09-24 A | 2002-10-15 |  | 52% | 7.61d | 18.25d |  |  | 112h | 58.7h |
| 11 | 1.4.1 | Catálogo de Índices de Revaluación |  | 12h | 2002-10-03 A | 2002-10-04 | 50 | 50% | 6h | 24.5d | 0d | Marcel de M. | 12h | 6h |
| 12 | 1.4.2 | Proceso de Revaluación de Activos |  | 16h | 2002-10-04 A | 2002-10-08 | 11 | 50% | 8h | 23.5d |  | Marcel de M. | 16h | 8h |
| 13 | 1.4.3 | Captura de imágenes de activos |  | 4h | 2002-10-08 A | 2002-10-09 A | 12 | 100% |  |  |  | Marcel de M. | 4h | 4h |
| 14 | 1.4.4 | Validar que no se sobrepasen los montos en la Adquisición de Activos |  | 6h | 2002-10-09 | 2002-10-09 | 13 |  |  | 18.25d | 0d | Marcel de M. | 6h |  |
| 15 | 1.4.5 | Datos Variables x Categoría / Clase |  | 16h | 2002-10-10 | 2002-10-11 | 14 |  |  | 18.25d | 0d | Marcel de M. | 16h |  |
| 16 | 1.4.6 | Integrar AF con CxC |  | 16h | 2002-10-14 | 2002-10-15 | 15 |  |  | 18.25d |  | Marcel de M. | 16h |  |
| 17 | 1.4.7 | Retiros de Activos desde AF |  | 26h | 2002-09-24 A | 2002-09-27 |  | 95% | 1.3h | 31d |  | Rodolfo Jiménez | 26h | 24.7h |
| 18 | 1.4.8 | Proceso de Transferencia de AF por Depto |  | 16h | 2002-09-27 A | 2002-10-01 A | 65 | 100% |  |  |  | Rodolfo Jiménez | 16h | 16h |
| 19 | 1.5 | **Contabilidad** |  | 2.5d | 2002-10-01 | 2002-10-03 |  |  |  | 26.25d |  |  | 20h |  |
| 20 | 1.5.1 | Impresión de Pólizas |  | 10h | 2002-10-01 | 2002-10-02 | 18 |  |  | 26.25d | 0d | Rodolfo Jiménez | 10h |  |
| 21 | 1.5.2 | Resumen de Pólizas Contables |  | 10h | 2002-10-02 | 2002-10-03 | 20 |  |  | 26.25d |  | Rodolfo Jiménez | 10h |  |
| 22 | 1.6 | **Facturación** |  | 0d | 2002-09-24 | 2002-09-24 |  |  |  | 34.25d |  |  |  |  |
| 23 | 1.6.1 | Afectación de Inventarios | milestone | 0h | 2002-09-24 | 2002-09-24 |  |  |  | 34.25d |  | Marcel de M. |  |  |
| 24 | 1.6.2 | Interfaz con CxC | milestone | 0h | 2002-09-24 | 2002-09-24 |  |  |  | 34.25d |  | Marcel de M. |  |  |
| 25 | 1.6.3 | Control de Folios Fiscales | milestone | 0h | 2002-09-24 | 2002-09-24 |  |  |  | 34.25d |  | Marcel de M. |  |  |
| 26 | 1.6.4 | Impresión de Facturas y recibos | milestone | 0h | 2002-09-24 | 2002-09-24 |  |  |  | 34.25d |  | Marcel de M. |  |  |
| 27 | 1.6.5 | Interfaz Contable | milestone | 0h | 2002-09-24 | 2002-09-24 |  |  |  | 34.25d |  | Marcel de M. |  |  |
| 28 | 1.6.6 | Manejo de Catálogos de Precios | milestone | 0h | 2002-09-24 | 2002-09-24 |  |  |  | 34.25d |  | Marcel de M. |  |  |
| 29 | 1.6.7 | Modelo de Datos para Facturación | milestone | 0h | 2002-09-24 | 2002-09-24 |  |  |  | 34.25d |  | Marcel de M. |  |  |
| 30 | 1.6.8 | Inclusión de Documentos de Contado | milestone | 0h | 2002-09-24 | 2002-09-24 |  |  |  | 34.25d |  | Marcel de M. |  |  |
| 31 | 1.6.9 | Manejo de Combos | milestone | 0h | 2002-09-24 | 2002-09-24 |  |  |  | 34.25d |  | Marcel de M. |  |  |

| ID | WBS | Task | Type | Duration | Start | Finish | Predecessors | Complete | Total slack | Resources | Work | Actual work |
| --- | --- | --- | --- | --- | --- | --- | --- | --- | --- | --- | --- | --- |
| 32 | 1.7 | **Tesorería** |  | 0d | 2002-09-24 | 2002-09-24 |  |  | 34.25d |  |  |  |
| 33 | 1.7.1 | Definir Todo el Sistema | milestone | 0h | 2002-09-24 | 2002-09-24 |  |  | 34.25d | Marcel de M. |  |  |
| 34 | 1.7.2 | Modelo de Datos | milestone | 0h | 2002-09-24 | 2002-09-24 |  |  | 34.25d | Marcel de M. |  |  |
| 35 | 1.7.3 | Desarrollo | milestone | 0h | 2002-09-24 | 2002-09-24 |  |  | 34.25d | Marcel de M. |  |  |
| 36 | 1.8 | **Compras** |  | 0d | 2002-09-24 | 2002-09-24 |  |  | 34.25d |  |  |  |
| 37 | 1.8.1 | Definir Todo el Sistema | milestone | 0h | 2002-09-24 | 2002-09-24 |  |  | 34.25d | Marcel de M. |  |  |
| 38 | 1.8.2 | Modelo de Datos | milestone | 0h | 2002-09-24 | 2002-09-24 |  |  | 34.25d | Marcel de M. |  |  |
| 39 | 1.8.3 | Desarrollo | milestone | 0h | 2002-09-24 | 2002-09-24 |  |  | 34.25d | Marcel de M. |  |  |
| 40 | 1.8.4 | Mejoras de Activos Fijos | milestone | 0h | 2002-09-24 | 2002-09-24 |  |  | 34.25d | Marcel de M. |  |  |
| 41 | 1.9 | **Consultas y reportes** |  | 27.5d | 2002-10-02 | 2002-11-11 | 7 |  | 0d |  | 220h |  |
| 42 | 1.9.1 | Movimientos Bancarios |  | 20h | 2002-10-02 | 2002-10-07 |  |  | 0d | Gustavo Mata | 20h |  |
| 43 | 1.9.2 | Inventarios |  | 20h | 2002-10-07 | 2002-10-09 | 42 |  | 0d | Gustavo Mata | 20h |  |
| 44 | 1.9.3 | Activo Fijo |  | 40h | 2002-10-09 | 2002-10-16 | 43 |  | 0d | Gustavo Mata | 40h |  |
| 45 | 1.9.4 | Facturación |  | 40h | 2002-10-16 | 2002-10-23 | 44 |  | 0d | Gustavo Mata | 40h |  |
| 46 | 1.9.5 | Tesorería |  | 40h | 2002-10-23 | 2002-10-30 | 45 |  | 0d | Gustavo Mata | 40h |  |
| 47 | 1.9.6 | Compras |  | 40h | 2002-10-30 | 2002-11-06 | 46 |  | 0d | Gustavo Mata | 40h |  |
| 48 | 1.9.7 | Administrativas |  | 20h | 2002-11-06 | 2002-11-11 | 47 |  | 0d | Gustavo Mata | 20h |  |
| 49 | 1.10 | **Generales** |  | 8.5d | 2002-09-24 A | 2002-10-04 A |  | 100% |  |  | 58h | 58h |
| 50 | 1.10.1 | **Urgentes** |  | 7.25d | 2002-09-24 A | 2002-10-03 A |  | 100% |  |  | 58h | 58h |
| 51 | 1.10.1.1 | Genérico de Reportes de SIF (PostDetalles) |  | 8h | 2002-09-24 A | 2002-09-24 A |  | 100% |  | Marcel de M. | 8h | 8h |
| 52 | 1.10.1.2 | Genérico de Reportes de SIF (Cortes de Pagina) |  | 8h | 2002-09-25 A | 2002-09-25 A | 51 | 100% |  | Marcel de M. | 8h | 8h |
| 53 | 1.10.1.3 | Genérico de Reportes de SIF (Cortes de Control) |  | 20h | 2002-09-26 A | 2002-09-30 A | 52 | 100% |  | Marcel de M. | 20h | 20h |
| 54 | 1.10.1.4 | Genérico de Reportes de SIF (en HTML) |  | 14h | 2002-09-30 A | 2002-10-02 A | 53 | 100% |  | Marcel de M. | 14h | 14h |
| 55 | 1.10.1.5 | Cortes en el Componente de Listas |  | 8h | 2002-10-02 A | 2002-10-03 A | 54 | 100% |  | Marcel de M. | 8h | 8h |

| ID | WBS | Task | Type | Duration | Start | Finish | Predecessors | Complete | Remaining | Total slack | Constraint | Resources | Work | Actual work |
| --- | --- | --- | --- | --- | --- | --- | --- | --- | --- | --- | --- | --- | --- | --- |
| 56 | 1.10.2 | **Secundarios** |  | 8.5d | 2002-09-24 A | 2002-10-04 A |  | 100% |  |  |  |  |  |  |
| 57 | 1.10.2.1 | Asistente de Configuración de Empresas | milestone | 0h | 2002-09-24 A | 2002-09-24 A | 58 | 100% |  |  |  |  |  |  |
| 58 | 1.10.2.2 | Barra de Navegación Rápida | milestone | 0h | 2002-09-24 A | 2002-09-24 A |  | 100% |  |  | start no earlier than 2002-09-24 |  |  |  |
| 59 | 1.10.2.3 | Indicador de ítem seleccionado en la Lista | milestone | 0h | 2002-09-24 A | 2002-09-24 A |  | 100% |  |  | start no earlier than 2002-09-24 |  |  |  |
| 60 | 1.10.2.4 | Compartir Sesión entre SIF , Dynamo y JSP | milestone | 0h | 2002-09-24 A | 2002-09-24 A |  | 100% |  |  | start no earlier than 2002-09-24 |  |  |  |
| 61 | 1.10.2.5 | Templates de errores ColdFusion | milestone | 0h | 2002-10-02 A | 2002-10-02 A |  | 100% |  |  | start no earlier than 2002-10-02 |  |  |  |
| 62 | 1.10.2.6 | Modificación de Templates de SIF | milestone | 0h | 2002-10-04 A | 2002-10-04 A |  | 100% |  |  | start no earlier than 2002-10-04 |  |  |  |
| 63 | 1.11 | **Implantación** |  | 10.5d | 2002-09-26 A | 2002-10-10 |  | 67% | 3.5d | 21.75d |  |  | 48h | 32h |
| 64 | 1.11.1 | Parametrizar CxP |  | 4h | 2002-09-26 A | 2002-09-26 A | 70 | 100% |  |  |  | Rodolfo Jiménez | 4h | 4h |
| 65 | 1.11.2 | Parametrizar CxC |  | 4h | 2002-09-27 A | 2002-09-27 A | 64 | 100% |  |  |  | Rodolfo Jiménez | 4h | 4h |
| 66 | 1.11.3 | Correr Parche 1 de ColdFusion en Producción |  | 2h | 2002-10-04 A | 2002-10-04 A | 21 | 100% |  |  |  | Rodolfo Jiménez | 2h | 2h |
| 67 | 1.11.4 | Instalar Fuentes de AF en producción |  | 2h | 2002-10-04 A | 2002-10-04 A | 66 | 100% |  |  |  | Rodolfo Jiménez | 2h | 2h |
| 68 | 1.11.5 | Parametrizar AF |  | 16h | 2002-10-04 A | 2002-10-08 A | 67 | 100% |  |  |  | Rodolfo Jiménez | 16h | 16h |
| 69 | 1.11.6 | Personalizar Reportes de Yamileth |  | 16h | 2002-10-08 | 2002-10-10 | 68 |  |  | 21.75d |  | Rodolfo Jiménez | 16h |  |
| 70 | 1.11.7 | Modificaciones a Contabilidad Generadas por Yamileth(Correcciones) |  | 4h | 2002-09-26 A | 2002-09-26 A | 17 | 100% |  |  |  | Rodolfo Jiménez | 4h | 4h |
